# D10126532InitialPlan

Schedule from MS Project, 2013-07-01 to 2013-10-23, costs in €.
Microsoft

## Calendars

- Standard: Mon-Fri 08:00-12:00, 13:00-17:00; Sat-Sun off.

## Resources

| Resource | Unit | Rate |
| --- | --- | --- |
| John Warde |  | 25 |
| Gary Dolan |  | 40 |
| Michael McMorrow |  | 32 |
| Fergal Browne |  | 35 |
| Carmel Keegan |  | 36 |
| Elaine McLaughlin |  | 22 |
| Nadia Moloney |  | 30 |
| CSP Test Account |  | 0.05 |
| CSP Production Account |  | 0.5 |
| CSP Staging | hr. | 0.3 |

## Schedule

| ID | WBS | Task | Type | Duration | Start | Finish | Predecessors | Total slack | Free slack | Resources | Work | Cost |
| --- | --- | --- | --- | --- | --- | --- | --- | --- | --- | --- | --- | --- |
| 1 | 1 | **Project Planning** |  | 44d | 2013-07-01 | 2013-08-29 |  | 39d |  |  | 34.5h | 922.5 |
| 2 | 1.1 | Project Charter Document |  | 2d | 2013-07-01 | 2013-07-02 |  | 78d | 0d | John Warde [50%] | 10.5h | 262.5 |
| 3 | 1.2 | Project Management Plan |  | 3d | 2013-07-03 | 2013-07-05 | 2 | 78d |  | John Warde [33.3%] | 16h | 400 |
| 4 | 1.3 | Project Review, Lessons Learned |  | 1d | 2013-08-29 | 2013-08-29 | 63 | 39d |  | John Warde [50%]; Gary Dolan [50%] | 8h | 260 |
| 5 | 2 | **Technical Product Design** |  | 8d | 2013-07-01 | 2013-07-10 |  | 0d |  |  | 214h | 7,014 |
| 6 | 2.1 | Requirements Gathering |  | 3d | 2013-07-01 | 2013-07-03 |  | 0d |  | Gary Dolan; John Warde [33.3%] | 32h | 1,160 |
| 7 | 2.2 | Software Architecture Design |  | 5d | 2013-07-04 | 2013-07-10 | 6 | 0d |  | Gary Dolan; Michael McMorrow | 80h | 2,880 |
| 8 | 2.3 | Cloud Infrastructure Design |  | 5d | 2013-07-04 | 2013-07-10 | 6 | 75d |  | Fergal Browne | 40h | 1,400 |
| 9 | 2.4 | Test Plan Design |  | 4d | 2013-07-04 | 2013-07-09 | 6 | 76d |  | Elaine McLaughlin | 32h | 704 |
| 10 | 2.5 | User Interface Design |  | 3d | 2013-07-04 | 2013-07-08 | 6 | 77d |  | Nadia Moloney; John Warde [17%] | 30h | 870 |
| 11 | 3 | **Technical Implementation** |  | 35d | 2013-07-11 | 2013-08-28 |  | 0d |  |  | 1046.92h | 27,293.55 |
| 12 | 3.1 | **Sprint 1** |  | 6d | 2013-07-11 | 2013-07-18 |  | 0d |  |  | 219.12h | 4,831.68 |
| 13 | 3.1.1 | Sprint Plan |  | 0.5d | 2013-07-11 | 2013-07-11 | 7 | 0d |  | John Warde; Gary Dolan | 8h | 260 |
| 14 | 3.1.2 | Implement Architecture Framework |  | 5d | 2013-07-11 | 2013-07-18 | 13 | 0d |  | Gary Dolan | 40h | 1,600 |
| 15 | 3.1.3 | Code Database Schema & Initial data |  | 2d | 2013-07-11 | 2013-07-15 | 13 | 69.5d | 0d | Michael McMorrow | 16h | 512 |
| 16 | 3.1.4 | Integrate OAuth for Authentication |  | 2d | 2013-07-15 | 2013-07-17 | 15 | 69.5d | 0d | Michael McMorrow; CSP Test Account [16%] | 23.52h | 512.38 |
| 17 | 3.1.5 | Login page & dummy landing page with basic user info |  | 1d | 2013-07-17 | 2013-07-18 | 16 | 69.5d |  | Michael McMorrow; CSP Test Account [75%] | 26h | 256.9 |
| 18 | 3.1.6 | Develop automated tests for sprint |  | 2d | 2013-07-11 | 2013-07-15 | 13 | 72.5d |  | Elaine McLaughlin | 24h | 528 |
| 19 | 3.1.7 | Develop Deployment Script for test Environment |  | 2d | 2013-07-11 | 2013-07-15 | 13 | 71.5d |  | Fergal Browne; CSP Test Account [50%] | 68h | 702.4 |
| 20 | 3.1.8 | Release Sprint | milestone | 0d | 2013-07-18 | 2013-07-18 | 14 | 0d |  |  |  |  |
| 21 | 3.1.9 | Sprint Review & Improve Process |  | 0.5d | 2013-07-18 | 2013-07-18 | 20 | 0d |  | Gary Dolan [60%]; Michael McMorrow [60%]; Fergal Browne [60%]; Carmel Keegan [60%]; Elaine McLaughlin [60%] | 13.6h | 460 |
| 22 | 3.2 | **Sprint 2** |  | 6d | 2013-07-19 | 2013-07-26 |  | 0d |  |  | 336.1h | 5,757.88 |
| 23 | 3.2.1 | Sprint Plan |  | 0.5d | 2013-07-19 | 2013-07-19 | 21 | 0d |  | John Warde; Gary Dolan | 8h | 260 |
| 24 | 3.2.2 | Implement Thesaurus Service Plugin |  | 3d | 2013-07-19 | 2013-07-24 | 23 | 0d |  | Gary Dolan | 24h | 960 |
| 25 | 3.2.3 | Code Main HTML5/jQuery page |  | 2d | 2013-07-19 | 2013-07-23 | 23 | 0.5d |  | Michael McMorrow; CSP Test Account [50%] | 63.5h | 514.38 |
| 26 | 3.2.4 | Integrate Thesaurus Data with HTML/jQuery |  | 1d | 2013-07-24 | 2013-07-25 | 24 | 0d |  | Gary Dolan | 8h | 320 |
| 27 | 3.2.5 | iOS App: Login Page + Thesaurus Integration |  | 4d | 2013-07-19 | 2013-07-25 | 23 | 64.5d |  | Carmel Keegan | 32h | 1,152 |
| 28 | 3.2.6 | Bug Fixes from previous sprint |  | 1d | 2013-07-25 | 2013-07-26 | 25, 26 | 0d |  | Gary Dolan; Michael McMorrow | 16h | 576 |
| 29 | 3.2.7 | Develop deployment script for production |  | 3d | 2013-07-19 | 2013-07-24 | 23 | 65.5d |  | Fergal Browne; CSP Production Account | 143h | 899.5 |
| 30 | 3.2.8 | Develop automated test for sprint |  | 3d | 2013-07-19 | 2013-07-24 | 23 | 65.5d |  | Elaine McLaughlin | 28h | 616 |
| 31 | 3.2.9 | Release Sprint | milestone | 0d | 2013-07-26 | 2013-07-26 | 28 | 0d |  |  |  |  |
| 32 | 3.2.10 | Sprint Review & Improve Process |  | 0.5d | 2013-07-26 | 2013-07-26 | 31 | 0d |  | Gary Dolan [60%]; Michael McMorrow [60%]; Fergal Browne [60%]; Carmel Keegan [60%]; Elaine McLaughlin [60%] | 13.6h | 460 |

| ID | WBS | Task | Type | Duration | Start | Finish | Predecessors | Total slack | Resources | Work | Cost |
| --- | --- | --- | --- | --- | --- | --- | --- | --- | --- | --- | --- |
| 33 | 3.3 | **Sprint 3** |  | 7d | 2013-07-29 | 2013-08-06 |  | 0d |  | 120h | 4,064 |
| 34 | 3.3.1 | Sprint Plan |  | 0.5d | 2013-07-29 | 2013-07-29 | 32 | 0d | John Warde; Gary Dolan | 8h | 260 |
| 35 | 3.3.2 | Integrate SEO Ad Campaign Framework |  | 1d | 2013-07-29 | 2013-07-30 | 34 | 61.5d | Michael McMorrow | 8h | 256 |
| 36 | 3.3.3 | Code Domain Name Availabity Module |  | 4d | 2013-07-29 | 2013-08-02 | 34 | 0d | Gary Dolan | 32h | 1,280 |
| 37 | 3.3.4 | iOS App: Integration with SEO, Domain Name availability |  | 3d | 2013-07-30 | 2013-08-02 | 36SS+1d | 58.5d | Carmel Keegan | 28h | 1,008 |
| 38 | 3.3.5 | Bug Fixes from previous sprint |  | 2d | 2013-08-02 | 2013-08-06 | 36 | 0d | Michael McMorrow | 16h | 512 |
| 39 | 3.3.6 | Develop automated test for sprint |  | 2d | 2013-07-29 | 2013-07-31 | 34 | 60.5d | Elaine McLaughlin | 16h | 352 |
| 40 | 3.3.7 | Release Sprint | milestone | 0d | 2013-08-06 | 2013-08-06 | 38 | 0d |  |  |  |
| 41 | 3.3.8 | Sprint Review & Improve Process |  | 0.5d | 2013-08-06 | 2013-08-06 | 40 | 0d | Gary Dolan [60%]; Michael McMorrow [60%]; Fergal Browne [60%]; Carmel Keegan [60%]; Elaine McLaughlin [60%] | 12h | 396 |
| 42 | 3.4 | **Sprint 4** |  | 6d | 2013-08-07 | 2013-08-14 |  | 0d |  | 116h | 3,824 |
| 43 | 3.4.1 | Sprint Plan |  | 0.5d | 2013-08-07 | 2013-08-07 | 41 | 0d | John Warde; Gary Dolan | 8h | 260 |
| 44 | 3.4.2 | Code Social Real Estate Availability Module |  | 3d | 2013-08-07 | 2013-08-12 | 43 | 0d | Gary Dolan; Michael McMorrow | 48h | 1,728 |
| 45 | 3.4.3 | iOS App: Social Real Estate Integration |  | 2d | 2013-08-08 | 2013-08-09 | 43SS+1d | 53d | Carmel Keegan | 16h | 576 |
| 46 | 3.4.4 | Develop automated test for sprint |  | 2d | 2013-08-07 | 2013-08-09 | 43 | 53.5d | Elaine McLaughlin | 16h | 352 |
| 47 | 3.4.5 | Bug Fixes from previous sprint |  | 2d | 2013-08-12 | 2013-08-14 | 44 | 0d | Michael McMorrow | 16h | 512 |
| 48 | 3.4.6 | Release Sprint | milestone | 0d | 2013-08-14 | 2013-08-14 | 47 | 0d |  |  |  |
| 49 | 3.4.7 | Sprint Review & Improve Process |  | 0.5d | 2013-08-14 | 2013-08-14 | 48 | 0d | Gary Dolan [60%]; Michael McMorrow [60%]; Fergal Browne [60%]; Carmel Keegan [60%]; Elaine McLaughlin [60%] | 12h | 396 |
| 50 | 3.5 | **Sprint 5** |  | 5d | 2013-08-15 | 2013-08-21 |  | 0d |  | 135.1h | 4,552 |
| 51 | 3.5.1 | Sprint Plan |  | 0.5d | 2013-08-15 | 2013-08-15 | 49 | 0d | John Warde; Gary Dolan | 6h | 180 |
| 52 | 3.5.2 | Bug Fixes from previous sprint |  | 2d | 2013-08-15 | 2013-08-19 | 51 | 47.5d | Gary Dolan; Michael McMorrow | 18h | 644 |
| 53 | 3.5.3 | Test scale-out (stress test) |  | 2d | 2013-08-15 | 2013-08-19 | 51 | 0d | Fergal Browne; Elaine McLaughlin; Gary Dolan; Michael McMorrow | 50.5h | 1,580 |
| 54 | 3.5.4 | Bug Fixing from scale-out testing |  | 2d | 2013-08-19 | 2013-08-21 | 53 | 0d | Gary Dolan; Michael McMorrow | 32h | 1,152 |
| 55 | 3.5.5 | iOS App: Final Integration and bug fixing |  | 2d | 2013-08-15 | 2013-08-19 | 51 | 47.5d | Carmel Keegan | 16h | 576 |
| 56 | 3.5.6 | Release Sprint | milestone | 0d | 2013-08-21 | 2013-08-21 | 54 | 0d |  |  |  |
| 57 | 3.5.7 | Sprint Review & Improve Process |  | 0.5d | 2013-08-21 | 2013-08-21 | 56 | 0d | Gary Dolan [60%]; Michael McMorrow [60%]; Fergal Browne [60%]; Carmel Keegan [60%]; Elaine McLaughlin [60%] | 12.6h | 420 |
| 58 | 3.6 | Release to Market (Go Live) | milestone | 0d | 2013-08-21 | 2013-08-21 | 57 | 0d |  |  |  |

| ID | WBS | Task | Type | Duration | Start | Finish | Predecessors | Total slack | Resources | Work | Cost |
| --- | --- | --- | --- | --- | --- | --- | --- | --- | --- | --- | --- |
| 59 | 3.7 | **Sprint 6** |  | 5d | 2013-08-22 | 2013-08-28 |  | 0d |  | 120.6h | 4,264 |
| 60 | 3.7.1 | Sprint Plan |  | 0.5d | 2013-08-22 | 2013-08-22 | 58 | 0d | John Warde; Gary Dolan | 8h | 260 |
| 61 | 3.7.2 | Post Live Bug Fixing |  | 4d | 2013-08-22 | 2013-08-28 | 60 | 0d | Gary Dolan; Michael McMorrow; Carmel Keegan | 100h | 3,584 |
| 62 | 3.7.3 | Release Sprint | milestone | 0d | 2013-08-28 | 2013-08-28 | 61 | 0d |  |  |  |
| 63 | 3.7.4 | Sprint Review & Improve Process |  | 0.5d | 2013-08-28 | 2013-08-28 | 62 | 0d | Gary Dolan [60%]; Michael McMorrow [60%]; Fergal Browne [60%]; Carmel Keegan [60%]; Elaine McLaughlin [60%] | 12.6h | 420 |
| 64 | 4 | **On going Support & Maintenance** |  | 40d | 2013-08-29 | 2013-10-23 |  | 0d |  | 416h | 13,696 |
| 65 | 4.1 | Website monitoring |  | 40d | 2013-08-29 | 2013-10-23 | 63 | 0d | Michael McMorrow [50%] | 160h | 5,120 |
| 66 | 4.2 | Bug fixing |  | 40d | 2013-08-29 | 2013-10-23 | 63 | 0d | Michael McMorrow [50%] | 160h | 5,120 |
| 67 | 4.3 | iOS Bug Fixing & Releases |  | 40d | 2013-08-29 | 2013-10-23 | 63 | 0d | Carmel Keegan [30%] | 96h | 3,456 |
| 68 | 5 | Project Close | milestone | 0d | 2013-10-23 | 2013-10-23 | 66 | 0d |  |  |  |
